# SSI Wedding 02

How a schedule from MS Project changed from version to version. A marks actual dates.

## Version 1 (saved 2015-12-21, file SSI Wedding 02.mpp)

Note of the change: codes added

| ID | WBS | Task | Duration | Start | Finish | Total float |
| --- | --- | --- | --- | --- | --- | --- |
| 1 | 1 | **Planning** | 1d? | 2015-12-04 | 2015-12-04 | 7d |
| 2 |  | Agree budget and approach | 1d? | 2015-12-04 | 2015-12-04 | 7d |
| 3 |  | Set wedding date | 1d? | 2015-12-04 | 2015-12-04 | 7d |
| 4 | 2 | **Attire** | 1d? | 2015-12-04 | 2015-12-04 | 7d |
| 5 | 2.1 | **Select and order wedding dress** | 1d? | 2015-12-04 | 2015-12-04 | 7d |
| 6 |  | Select wedding dress | 1d? | 2015-12-04 | 2015-12-04 | 7d |
| 7 |  | Order dress | 1d? | 2015-12-04 | 2015-12-04 | 7d |
| 8 |  | Measurements and fittings | 1d? | 2015-12-04 | 2015-12-04 | 7d |
| 9 |  | Select and order bridesmaid dresses | 1d? | 2015-12-04 | 2015-12-04 | 7d |
| 10 |  | Select and order groom tuxedo | 1d? | 2015-12-04 | 2015-12-04 | 7d |
| 11 | 3 | **Guests** | 8d? | 2015-12-04 | 2015-12-15 | 0d |
| 12 |  | Make Guest List | 8d | 2015-12-04 | 2015-12-15 | 0d |
| 13 |  | Send out invitations | 1d? | 2015-12-04 | 2015-12-04 | 7d |
| 14 |  | Finalize Guest List | 1d? | 2015-12-04 | 2015-12-04 | 7d |
| 15 |  | Book guest accommodation | 1d? | 2015-12-04 | 2015-12-04 | 7d |
| 16 | 4 | **Reception Venue** | 1d? | 2015-12-04 | 2015-12-04 | 7d |
| 17 |  | Make reception venue short list | 1d? | 2015-12-04 | 2015-12-04 | 7d |
| 18 |  | Book reception venue | 1d? | 2015-12-04 | 2015-12-04 | 7d |
| 19 |  | Plan ans finalize seating arrangements | 1d? | 2015-12-04 | 2015-12-04 | 7d |
| 20 | 5 | **Catering** | 1d? | 2015-12-04 | 2015-12-04 | 7d |
| 21 |  | Make caterer short list | 1d? | 2015-12-04 | 2015-12-04 | 7d |
| 22 |  | Book caterer and finalize menu | 1d? | 2015-12-04 | 2015-12-04 | 7d |
| 23 |  | Make baker short list | 1d? | 2015-12-04 | 2015-12-04 | 7d |
| 24 |  | Select baker and order cake | 1d? | 2015-12-04 | 2015-12-04 | 7d |
| 25 | 6 | **Flowers** | 1d? | 2015-12-04 | 2015-12-04 | 7d |
| 26 |  | Make florist short list | 1d? | 2015-12-04 | 2015-12-04 | 7d |
| 27 |  | Select florist and order flowers | 1d? | 2015-12-04 | 2015-12-04 | 7d |
| 28 | 7 | **Memories** | 1d? | 2015-12-04 | 2015-12-04 | 7d |
| 29 |  | Make photographer short list | 1d? | 2015-12-04 | 2015-12-04 | 7d |
| 30 |  | Select and book photographer | 1d? | 2015-12-04 | 2015-12-04 | 7d |
| 31 | 8 | **Details** | 1d? | 2015-12-04 | 2015-12-04 | 7d |
| 32 |  | Select and buy rings | 1d? | 2015-12-04 | 2015-12-04 | 7d |
| 33 |  | Select and book entertainment | 1d? | 2015-12-04 | 2015-12-04 | 7d |
| 34 |  | Select and book transport | 1d? | 2015-12-04 | 2015-12-04 | 7d |
| 35 |  | Register wedding and get license | 1d? | 2015-12-04 | 2015-12-04 | 7d |
| 36 | 9 | **Wedding Day** | 1d? | 2015-12-04 | 2015-12-04 | 7d |
| 37 |  | Make wedding venue short list | 1d? | 2015-12-04 | 2015-12-04 | 7d |
| 38 |  | Book wedding venue | 1d? | 2015-12-04 | 2015-12-04 | 7d |
| 39 |  | Rehearsal | 1d? | 2015-12-04 | 2015-12-04 | 7d |
| 40 |  | Wedding day | 1d? | 2015-12-04 | 2015-12-04 | 7d |
| 41 | 10 | **Honeymoon** | 1d? | 2015-12-04 | 2015-12-04 | 7d |
| 42 |  | Make honeymoon destination short list | 1d? | 2015-12-04 | 2015-12-04 | 7d |
| 43 |  | Select honeymoon destination and book honeymoon | 1d? | 2015-12-04 | 2015-12-04 | 7d |

## Version 2 (saved 2015-12-23, file SSI Wedding 03.mpp)

Note of the change: codes added

Last finish 2015-12-15 → 2016-05-23 (+160d).

Added:

| ID | Task | Duration | Start | Finish | Predecessors |
| --- | --- | --- | --- | --- | --- |
| 5 | Wedding date set | 0d | 2016-01-11 | 2016-01-11 | 4 |
| 14 | All attire ordered | 0d | 2016-05-23 | 2016-05-23 | 8, 12, 13 |
| 19 | Guest List finalized | 0d | 2016-02-29 | 2016-02-29 | 18 |
| 24 | Reception venue booked | 0d | 2016-01-08 | 2016-01-08 | 23 |
| 42 | Wedding registered and licensed | 0d | 2015-12-24 | 2015-12-24 | 41 |
| 46 | Wedding venue booked | 0d | 2016-01-08 | 2016-01-08 | 45 |

Removed: 1 Planning

Changed:

| ID | Task | Start | Finish | Duration | Total float | Predecessors | Other |
| --- | --- | --- | --- | --- | --- | --- | --- |
| 2 | Agree budget and approach |  | 2015-12-04 → 2015-12-17 (+13d) | 1d? → 10d | 7d → 17d |  |  |
| 4 | Set wedding date | 2015-12-04 → 2016-01-11 (+38d) | 2015-12-04 → 2016-01-11 (+38d) | 1d? → 1d | 7d → 55d | none → 23, 45 |  |
| 7 | **Attire** | 2015-12-04 → 2015-12-18 (+14d) | 2015-12-04 → 2016-05-23 (+171d) | 1d? → 112d | 7d → 0d | none → 2 |  |
| 8 | **Select and order wedding dress** | 2015-12-04 → 2015-12-18 (+14d) | 2015-12-04 → 2016-04-08 (+126d) | 1d? → 81d | 7d → 17d |  |  |
| 9 | Select wedding dress | 2015-12-04 → 2015-12-18 (+14d) | 2015-12-04 → 2016-02-11 (+69d) | 1d? → 40d | 7d → 17d |  |  |
| 10 | Order dress | 2015-12-04 → 2016-02-12 (+70d) | 2015-12-04 → 2016-02-12 (+70d) | 1d? → 1d | 7d → 31d | none → 9 |  |
| 11 | Measurements and fittings | 2015-12-04 → 2016-02-15 (+73d) | 2015-12-04 → 2016-04-08 (+126d) | 1d? → 40d | 7d → 31d | none → 10 |  |
| 12 | Select and order bridesmaid dresses | 2015-12-04 → 2016-03-01 (+88d) | 2015-12-04 → 2016-05-23 (+171d) | 1d? → 60d | 7d → 0d | none → 9FS-5d | constraint none → start no earlier than 2016-03-01 |
| 13 | Select and order groom tuxedo | 2015-12-04 → 2015-12-18 (+14d) | 2015-12-04 → 2016-01-28 (+55d) | 1d? → 30d | 7d → 82d |  |  |
| 15 | **Guests** | 2015-12-04 → 2015-12-18 (+14d) | 2015-12-15 → 2016-03-07 (+83d) | 8d? → 57d | 0d → 55d | none → 2 |  |
| 16 | Make Guest List | 2015-12-04 → 2015-12-18 (+14d) | 2015-12-15 → 2016-01-07 (+23d) | 8d → 15d | 0d → 67d |  |  |
| 17 | Send out invitations | 2015-12-04 → 2016-01-12 (+39d) | 2015-12-04 → 2016-02-08 (+66d) | 1d? → 20d | 7d → 55d | none → 16SS+5d, 4 |  |
| 18 | Finalize Guest List | 2015-12-04 → 2016-02-23 (+81d) | 2015-12-04 → 2016-02-29 (+87d) | 1d? → 5d | 7d → 55d | none → 17FF+15d |  |
| 20 | Book guest accommodation | 2015-12-04 → 2016-03-01 (+88d) | 2015-12-04 → 2016-03-07 (+94d) | 1d? → 5d | 7d → 55d | none → 18 |  |
| 21 | **Reception Venue** | 2015-12-04 → 2015-12-18 (+14d) | 2015-12-04 → 2016-03-07 (+94d) | 1d? → 57d | 7d → 55d | none → 2 |  |
| 22 | Make reception venue short list | 2015-12-04 → 2015-12-18 (+14d) | 2015-12-04 → 2016-01-07 (+34d) | 1d? → 15d | 7d → 55d |  |  |
| 23 | Book reception venue | 2015-12-04 → 2016-01-08 (+35d) | 2015-12-04 → 2016-01-08 (+35d) | 1d? → 1d | 7d → 55d | none → 22 |  |
| 25 | Plan and finalize seating arrangements | 2015-12-04 → 2016-03-01 (+88d) | 2015-12-04 → 2016-03-07 (+94d) | 1d? → 5d | 7d → 55d | none → 18 | was named Plan ans finalize seating arrangements |
| 26 | **Catering** | 2015-12-04 → 2015-12-18 (+14d) | 2015-12-04 → 2016-01-28 (+55d) | 1d? → 30d | 7d → 82d | none → 2 |  |
| 27 | Make caterer short list | 2015-12-04 → 2015-12-18 (+14d) | 2015-12-04 → 2016-01-07 (+34d) | 1d? → 15d | 7d → 82d |  |  |
| 28 | Book caterer and finalize menu | 2015-12-04 → 2016-01-08 (+35d) | 2015-12-04 → 2016-01-28 (+55d) | 1d? → 15d | 7d → 82d | none → 27 |  |
| 29 | Make baker short list | 2015-12-04 → 2015-12-18 (+14d) | 2015-12-04 → 2016-01-07 (+34d) | 1d? → 15d | 7d → 82d |  |  |
| 30 | Select baker and order cake | 2015-12-04 → 2016-01-08 (+35d) | 2015-12-04 → 2016-01-28 (+55d) | 1d? → 15d | 7d → 82d | none → 29 |  |
| 31 | **Flowers** | 2015-12-04 → 2015-12-18 (+14d) | 2015-12-04 → 2016-01-28 (+55d) | 1d? → 30d | 7d → 82d | none → 2 |  |
| 32 | Make florist short list | 2015-12-04 → 2015-12-18 (+14d) | 2015-12-04 → 2016-01-07 (+34d) | 1d? → 15d | 7d → 82d |  |  |
| 33 | Select florist and order flowers | 2015-12-04 → 2016-01-08 (+35d) | 2015-12-04 → 2016-01-28 (+55d) | 1d? → 15d | 7d → 82d | none → 32 |  |
| 34 | **Memories** | 2015-12-04 → 2015-12-18 (+14d) | 2015-12-04 → 2016-01-28 (+55d) | 1d? → 30d | 7d → 82d | none → 2 |  |
| 35 | Make photographer short list | 2015-12-04 → 2015-12-18 (+14d) | 2015-12-04 → 2016-01-07 (+34d) | 1d? → 15d | 7d → 82d |  |  |
| 36 | Select and book photographer | 2015-12-04 → 2016-01-08 (+35d) | 2015-12-04 → 2016-01-28 (+55d) | 1d? → 15d | 7d → 82d | none → 35 |  |
| 37 | **Details** | 2015-12-04 → 2015-12-18 (+14d) | 2015-12-04 → 2016-01-14 (+41d) | 1d? → 20d | 7d → 92d | none → 2 |  |
| 38 | Select and buy rings | 2015-12-04 → 2015-12-18 (+14d) | 2015-12-04 → 2016-01-14 (+41d) | 1d? → 20d | 7d → 92d |  |  |
| 39 | Select and book entertainment | 2015-12-04 → 2015-12-18 (+14d) | 2015-12-04 → 2016-01-14 (+41d) | 1d? → 20d | 7d → 92d |  |  |
| 40 | Select and book transport | 2015-12-04 → 2015-12-18 (+14d) | 2015-12-04 → 2015-12-31 (+27d) | 1d? → 10d | 7d → 102d |  |  |
| 41 | Register wedding and get license | 2015-12-04 → 2015-12-18 (+14d) | 2015-12-04 → 2015-12-24 (+20d) | 1d? → 5d | 7d → 107d |  |  |
| 43 | **Wedding Day** | 2015-12-04 → 2015-12-18 (+14d) | 2015-12-04 → 2016-01-08 (+35d) | 1d? → 16d | 7d → 55d | none → 2 |  |
| 44 | Make wedding venue short list | 2015-12-04 → 2015-12-18 (+14d) | 2015-12-04 → 2016-01-07 (+34d) | 1d? → 15d | 7d → 55d |  |  |
| 45 | Book wedding venue | 2015-12-04 → 2016-01-08 (+35d) | 2015-12-04 → 2016-01-08 (+35d) | 1d? → 1d | 7d → 55d | none → 44 |  |
| 47 | Rehearsal | 2015-12-04 → 2015-12-18 (+14d) | 2015-12-04 → 2015-12-18 (+14d) | 1d? → 1d | 7d → 111d | none → 48SS-7d |  |
| 48 | Wedding day | 2015-12-04 → 2015-12-18 (+14d) | 2015-12-04 → 2015-12-18 (+14d) | 1d? → 1d | 7d → 111d |  |  |
| 49 | **Honeymoon** | 2015-12-04 → 2015-12-18 (+14d) | 2015-12-04 → 2016-01-28 (+55d) | 1d? → 30d | 7d → 82d | none → 2 |  |
| 50 | Make honeymoon destination short list | 2015-12-04 → 2015-12-18 (+14d) | 2015-12-04 → 2016-01-14 (+41d) | 1d? → 20d | 7d → 82d |  |  |
| 51 | Select honeymoon destination and book honeymoon | 2015-12-04 → 2016-01-15 (+42d) | 2015-12-04 → 2016-01-28 (+55d) | 1d? → 10d | 7d → 82d | none → 50 |  |

## Version 3 (saved 2015-12-24, file SSI Wedding 04.mpp)

Note of the change: codes added

Last finish stays 2016-05-23.

Changed:

| ID | Task | Other |
| --- | --- | --- |
| 2 | Agree budget and approach | resources none → Bride; Groom |
| 36 | Select and book photographer | resources none → Photographer [0.1%] |
| 38 | Select and buy rings | resources none → Wedding ring [2 ring]; Bride; Groom |

## Version 4 (saved 2016-01-05, file SSI Wedding 05.mpp)

Note of the change: codes added

Last finish 2016-05-23 → 2016-05-24 (+1d).

Added:

| ID | Task | Duration | Start | Finish |
| --- | --- | --- | --- | --- |
| 7 | **PREPARATION PHASE** | 112d | 2015-12-18 | 2016-05-23 |

Changed:

| ID | Task | Start | Finish | Total float | Predecessors | Other |
| --- | --- | --- | --- | --- | --- | --- |
| 10 | Select wedding dress |  |  |  |  | resources none → Bride [20%] |
| 11 | Order dress |  |  |  |  | resources none → Bride [50%] |
| 12 | Measurements and fittings |  |  |  |  | resources none → Bride [10%] |
| 13 | Select and order bridesmaid dresses |  |  |  |  | resources none → Bridesmaid 1 [20%]; Bride [10%]; Bridesmaid 2 [20%] |
| 14 | Select and order groom tuxedo |  |  |  |  | resources none → Bride [20%] |
| 17 | Make Guest List |  |  |  |  | resources none → Bride; Groom |
| 18 | Send out invitations |  |  |  |  | resources none → Groom [50%] |
| 19 | Finalize Guest List |  |  |  |  | resources none → Bride [50%]; Groom [50%] |
| 21 | Book guest accommodation |  |  |  |  | resources none → Groom [50%] |
| 23 | Make reception venue short list |  |  |  |  | resources none → Bride [50%]; Groom [50%] |
| 24 | Book reception venue |  |  |  |  | resources none → Bride [50%] |
| 26 | Plan and finalize seating arrangements |  |  |  |  | resources none → Bride [50%] |
| 28 | Make caterer short list |  |  |  |  | resources none → Groom [50%]; Bride [10%] |
| 29 | Book caterer and finalize menu |  |  |  |  | resources none → Bride [20%]; Groom [20%] |
| 30 | Make baker short list |  |  |  |  | resources none → Groom [50%]; Bride [10%] |
| 31 | Select baker and order cake |  |  |  |  | resources none → Bride [20%]; Groom [20%] |
| 33 | Make florist short list |  |  |  |  | resources none → Groom [50%]; Bride [10%] |
| 34 | Select florist and order flowers |  |  |  |  | resources none → Bride [20%]; Groom [20%] |
| 36 | Make photographer short list |  |  |  |  | resources none → Bride [50%]; Groom [10%] |
| 37 | Select and book photographer |  |  |  |  | resources Photographer [0.1%] → Photographer [0.1%]; Bride [20%]; Groom [20%] |
| 39 | Select and buy rings |  |  |  |  | resources Wedding ring [2 ring]; Bride; Groom → Wedding ring [2 ring]; Bride [20%]; Groom [20%] |
| 40 | Select and book entertainment |  |  |  |  | resources none → Bride [50%]; Groom [20%] |
| 41 | Select and book transport |  |  |  |  | resources none → Bride [20%]; Groom [20%] |
| 42 | Register wedding and get license |  |  |  |  | resources none → Groom [20%]; Bride [20%] |
| 44 | **Wedding Venue** |  |  |  |  | was named Wedding Day |
| 45 | Make wedding venue short list |  |  |  |  | resources none → Bride [50%]; Groom [50%] |
| 46 | Book wedding venue |  |  |  |  | resources none → Bride [20%] |
| 49 | Make honeymoon destination short list |  |  |  |  | resources none → Bride [40%]; Groom [40%] |
| 50 | Select honeymoon destination and book honeymoon |  |  |  |  | resources none → Bride [20%]; Groom [20%] |
| 52 | Rehearsal | 2015-12-18 → 2016-05-13 (+147d) | 2015-12-18 → 2016-05-13 (+147d) | 111d → 7d |  | resources none → Bride; Groom |
| 53 | Wedding day | 2015-12-18 → 2016-05-24 (+158d) | 2015-12-18 → 2016-05-24 (+158d) | 111d → 0d | none → 7 | resources none → Bride; Groom |

## Version 5 (saved 2016-01-28, file SSI Wedding 07.mpp)

Note of the change: codes added

Last finish 2016-05-24 → 2016-08-25 (+93d).

Changed:

| ID | Task | Start | Finish | Duration | Total float | Predecessors | Other |
| --- | --- | --- | --- | --- | --- | --- | --- |
| 4 | Set wedding date | 2016-01-11 → 2016-02-22 (+42d) | 2016-01-11 → 2016-02-22 (+42d) |  | 55d → 0d |  |  |
| 5 | Wedding date set | 2016-01-11 → 2016-02-22 (+42d) | 2016-01-11 → 2016-02-22 (+42d) |  | 96d → 40d |  |  |
| 7 | **PREPARATION PHASE** |  | 2016-05-23 → 2016-07-26 (+64d) | 112d → 158d |  |  |  |
| 8 | **Attire** | 2015-12-18 → 2016-01-08 (+21d) |  | 112d → 97d | 0d → 46d |  |  |
| 9 | **Select and order wedding dress** | 2015-12-18 → 2016-01-08 (+21d) | 2016-04-08 → 2016-05-17 (+39d) | 81d → 93d | 17d → 48d |  |  |
| 10 | Select wedding dress | 2015-12-18 → 2016-01-08 (+21d) | 2016-02-11 → 2016-03-03 (+21d) |  | 17d → 48d |  |  |
| 11 | Order dress | 2016-02-12 → 2016-03-22 (+39d) | 2016-02-12 → 2016-03-22 (+39d) |  | 31d → 50d |  | resources Bride [50%] → Bride [50%]; Bridesmaids' attire [0.1%] |
| 12 | Measurements and fittings | 2016-02-15 → 2016-03-23 (+37d) | 2016-04-08 → 2016-05-17 (+39d) |  | 31d → 50d |  |  |
| 13 | Select and order bridesmaid dresses |  |  |  | 0d → 46d |  | resources Bridesmaid 1 [20%]; Bride [10%]; Bridesmaid 2 [20%] → Bridesmaid 1 [20%]; Bride [10%]; Bridesmaid 2 [20%]; Bridesmaids' attire [0.1%] |
| 14 | Select and order groom tuxedo | 2015-12-18 → 2016-03-23 (+96d) | 2016-01-28 → 2016-05-03 (+96d) |  | 82d → 60d |  | resources Bride [20%] → Bride [20%]; Groom's attire [0.1%] |
| 16 | **Guests** |  | 2016-03-07 → 2016-05-17 (+71d) | 57d → 108d | 55d → 42d |  |  |
| 18 | Send out invitations | 2016-01-12 → 2016-02-23 (+42d) | 2016-02-08 → 2016-03-21 (+42d) |  | 55d → 0d |  | resources Groom [50%] → Groom [50%]; Stationery [0.1%] |
| 19 | Finalize Guest List | 2016-02-23 → 2016-05-04 (+71d) | 2016-02-29 → 2016-05-10 (+71d) |  | 55d → 50d |  |  |
| 20 | Guest List finalized | 2016-02-29 → 2016-05-10 (+71d) | 2016-02-29 → 2016-05-10 (+71d) |  | 60d → 55d |  |  |
| 21 | Book guest accommodation | 2016-03-01 → 2016-05-11 (+71d) | 2016-03-07 → 2016-05-17 (+71d) |  | 55d → 50d |  |  |
| 22 | **Reception Venue** | 2015-12-18 → 2016-01-08 (+21d) | 2016-03-07 → 2016-05-17 (+71d) | 57d → 93d | 55d → 0d |  |  |
| 23 | Make reception venue short list | 2015-12-18 → 2016-01-08 (+21d) | 2016-01-07 → 2016-01-28 (+21d) |  | 55d → 0d |  |  |
| 24 | Book reception venue | 2016-01-08 → 2016-02-19 (+42d) | 2016-01-08 → 2016-02-19 (+42d) |  | 55d → 0d |  | resources Bride [50%] → Bride [50%]; Reception venue [0.1%] |
| 25 | Reception venue booked | 2016-01-08 → 2016-02-19 (+42d) | 2016-01-08 → 2016-02-19 (+42d) |  | 96d → 112d |  |  |
| 26 | Plan and finalize seating arrangements | 2016-03-01 → 2016-05-11 (+71d) | 2016-03-07 → 2016-05-17 (+71d) |  | 55d → 50d |  |  |
| 27 | **Catering** | 2015-12-18 → 2016-01-08 (+21d) | 2016-01-28 → 2016-07-05 (+159d) | 30d → 128d | 82d → 15d |  |  |
| 28 | Make caterer short list | 2015-12-18 → 2016-01-08 (+21d) | 2016-01-07 → 2016-01-28 (+21d) |  | 82d → 113d |  |  |
| 29 | Book caterer and finalize menu | 2016-01-08 → 2016-01-29 (+21d) | 2016-01-28 → 2016-02-18 (+21d) |  | 82d → 113d |  | resources Bride [20%]; Groom [20%] → Bride [20%]; Groom [20%]; Catering [0.1%] |
| 30 | Make baker short list | 2015-12-18 → 2016-05-25 (+159d) | 2016-01-07 → 2016-06-14 (+159d) |  | 82d → 15d |  |  |
| 31 | Select baker and order cake | 2016-01-08 → 2016-06-15 (+159d) | 2016-01-28 → 2016-07-05 (+159d) |  | 82d → 15d |  | resources Bride [20%]; Groom [20%] → Bride [20%]; Groom [20%]; Cake [0.1%] |
| 32 | **Flowers** | 2015-12-18 → 2016-04-13 (+117d) | 2016-01-28 → 2016-05-24 (+117d) |  | 82d → 45d |  |  |
| 33 | Make florist short list | 2015-12-18 → 2016-04-13 (+117d) | 2016-01-07 → 2016-05-03 (+117d) |  | 82d → 45d |  |  |
| 34 | Select florist and order flowers | 2016-01-08 → 2016-05-04 (+117d) | 2016-01-28 → 2016-05-24 (+117d) |  | 82d → 45d |  | resources Bride [20%]; Groom [20%] → Bride [20%]; Groom [20%]; Flowers [0.1%] |
| 35 | **Memories** | 2015-12-18 → 2016-03-23 (+96d) | 2016-01-28 → 2016-05-03 (+96d) |  | 82d → 60d |  |  |
| 36 | Make photographer short list | 2015-12-18 → 2016-03-23 (+96d) | 2016-01-07 → 2016-04-12 (+96d) |  | 82d → 60d |  |  |
| 37 | Select and book photographer | 2016-01-08 → 2016-04-13 (+96d) | 2016-01-28 → 2016-05-03 (+96d) |  | 82d → 60d |  |  |
| 38 | **Details** | 2015-12-18 → 2016-02-23 (+67d) | 2016-01-14 → 2016-06-14 (+152d) | 20d → 81d | 92d → 30d |  |  |
| 39 | Select and buy rings | 2015-12-18 → 2016-05-18 (+152d) | 2016-01-14 → 2016-06-14 (+152d) |  | 92d → 30d |  | resources Wedding ring [2 ring]; Bride [20%]; Groom [20%] → Wedding rings [0 ring]; Bride [20%]; Groom [20%] |
| 40 | Select and book entertainment | 2015-12-18 → 2016-02-23 (+67d) | 2016-01-14 → 2016-03-21 (+67d) |  | 92d → 91d | none → 5 | resources Bride [50%]; Groom [20%] → Bride [50%]; Groom [20%]; Entertainment [0.1%] |
| 41 | Select and book transport | 2015-12-18 → 2016-05-18 (+152d) | 2015-12-31 → 2016-05-31 (+152d) |  | 102d → 40d | none → 5 |  |
| 42 | Register wedding and get license | 2015-12-18 → 2016-02-23 (+67d) | 2015-12-24 → 2016-02-29 (+67d) |  | 107d → 106d | none → 5 |  |
| 43 | Wedding registered and licensed | 2015-12-24 → 2016-02-29 (+67d) | 2015-12-24 → 2016-02-29 (+67d) |  | 107d → 106d |  |  |
| 44 | **Wedding Venue** | 2015-12-18 → 2016-01-29 (+42d) | 2016-01-08 → 2016-02-19 (+42d) |  | 55d → 0d |  |  |
| 45 | Make wedding venue short list | 2015-12-18 → 2016-01-29 (+42d) | 2016-01-07 → 2016-02-18 (+42d) |  | 55d → 0d |  |  |
| 46 | Book wedding venue | 2016-01-08 → 2016-02-19 (+42d) | 2016-01-08 → 2016-02-19 (+42d) |  | 55d → 0d |  | resources Bride [20%] → Bride [20%]; Wedding venue [0.1%] |
| 47 | Wedding venue booked | 2016-01-08 → 2016-02-19 (+42d) | 2016-01-08 → 2016-02-19 (+42d) |  | 96d → 112d |  |  |
| 48 | **Honeymoon** | 2015-12-18 → 2016-06-15 (+180d) | 2016-01-28 → 2016-07-26 (+180d) |  | 82d → 0d | 2 → none |  |
| 49 | Make honeymoon destination short list | 2015-12-18 → 2016-06-15 (+180d) | 2016-01-14 → 2016-07-12 (+180d) |  | 82d → 0d | none → 2 |  |
| 50 | Select honeymoon destination and book honeymoon | 2016-01-15 → 2016-07-13 (+180d) | 2016-01-28 → 2016-07-26 (+180d) |  | 82d → 0d |  | resources Bride [20%]; Groom [20%] → Bride [20%]; Groom [20%]; Honeymoon cost [0.1%] |
| 52 | Rehearsal | 2016-05-13 → 2016-08-16 (+95d) | 2016-05-13 → 2016-08-16 (+95d) |  |  |  |  |
| 53 | Wedding day | 2016-05-24 → 2016-08-25 (+93d) | 2016-05-24 → 2016-08-25 (+93d) |  |  | 7 → 7FS+21d |  |

## Version 6 (saved 2016-01-28, file SSI Wedding 08.mpp)

Note of the change: codes added

Last finish stays 2016-08-25.

Changed:

| ID | Task | Other |
| --- | --- | --- |
| 2 | Agree budget and approach | baseline start none → 2015-12-04; baseline finish none → 2015-12-17 |
| 4 | Set wedding date | baseline start none → 2016-02-22; baseline finish none → 2016-02-22 |
| 5 | Wedding date set | baseline start none → 2016-02-22; baseline finish none → 2016-02-22 |
| 7 | **PREPARATION PHASE** | baseline start none → 2015-12-18; baseline finish none → 2016-07-26 |
| 8 | **Attire** | baseline start none → 2016-01-08; baseline finish none → 2016-05-23 |
| 9 | **Select and order wedding dress** | baseline start none → 2016-01-08; baseline finish none → 2016-05-17 |
| 10 | Select wedding dress | baseline start none → 2016-01-08; baseline finish none → 2016-03-03 |
| 11 | Order dress | baseline start none → 2016-03-22; baseline finish none → 2016-03-22 |
| 12 | Measurements and fittings | baseline start none → 2016-03-23; baseline finish none → 2016-05-17 |
| 13 | Select and order bridesmaid dresses | baseline start none → 2016-03-01; baseline finish none → 2016-05-23 |
| 14 | Select and order groom tuxedo | baseline start none → 2016-03-23; baseline finish none → 2016-05-03 |
| 15 | All attire ordered | baseline start none → 2016-05-23; baseline finish none → 2016-05-23 |
| 16 | **Guests** | baseline start none → 2015-12-18; baseline finish none → 2016-05-17 |
| 17 | Make Guest List | baseline start none → 2015-12-18; baseline finish none → 2016-01-07 |
| 18 | Send out invitations | baseline start none → 2016-02-23; baseline finish none → 2016-03-21 |
| 19 | Finalize Guest List | baseline start none → 2016-05-04; baseline finish none → 2016-05-10 |
| 20 | Guest List finalized | baseline start none → 2016-05-10; baseline finish none → 2016-05-10 |
| 21 | Book guest accommodation | baseline start none → 2016-05-11; baseline finish none → 2016-05-17 |
| 22 | **Reception Venue** | baseline start none → 2016-01-08; baseline finish none → 2016-05-17 |
| 23 | Make reception venue short list | baseline start none → 2016-01-08; baseline finish none → 2016-01-28 |
| 24 | Book reception venue | baseline start none → 2016-02-19; baseline finish none → 2016-02-19 |
| 25 | Reception venue booked | baseline start none → 2016-02-19; baseline finish none → 2016-02-19 |
| 26 | Plan and finalize seating arrangements | baseline start none → 2016-05-11; baseline finish none → 2016-05-17 |
| 27 | **Catering** | baseline start none → 2016-01-08; baseline finish none → 2016-07-05 |
| 28 | Make caterer short list | baseline start none → 2016-01-08; baseline finish none → 2016-01-28 |
| 29 | Book caterer and finalize menu | baseline start none → 2016-01-29; baseline finish none → 2016-02-18 |
| 30 | Make baker short list | baseline start none → 2016-05-25; baseline finish none → 2016-06-14 |
| 31 | Select baker and order cake | baseline start none → 2016-06-15; baseline finish none → 2016-07-05 |
| 32 | **Flowers** | baseline start none → 2016-04-13; baseline finish none → 2016-05-24 |
| 33 | Make florist short list | baseline start none → 2016-04-13; baseline finish none → 2016-05-03 |
| 34 | Select florist and order flowers | baseline start none → 2016-05-04; baseline finish none → 2016-05-24 |
| 35 | **Memories** | baseline start none → 2016-03-23; baseline finish none → 2016-05-03 |
| 36 | Make photographer short list | baseline start none → 2016-03-23; baseline finish none → 2016-04-12 |
| 37 | Select and book photographer | baseline start none → 2016-04-13; baseline finish none → 2016-05-03 |
| 38 | **Details** | baseline start none → 2016-02-23; baseline finish none → 2016-06-14 |
| 39 | Select and buy rings | baseline start none → 2016-05-18; baseline finish none → 2016-06-14 |
| 40 | Select and book entertainment | baseline start none → 2016-02-23; baseline finish none → 2016-03-21 |
| 41 | Select and book transport | baseline start none → 2016-05-18; baseline finish none → 2016-05-31 |
| 42 | Register wedding and get license | baseline start none → 2016-02-23; baseline finish none → 2016-02-29 |
| 43 | Wedding registered and licensed | baseline start none → 2016-02-29; baseline finish none → 2016-02-29 |
| 44 | **Wedding Venue** | baseline start none → 2016-01-29; baseline finish none → 2016-02-19 |
| 45 | Make wedding venue short list | baseline start none → 2016-01-29; baseline finish none → 2016-02-18 |
| 46 | Book wedding venue | baseline start none → 2016-02-19; baseline finish none → 2016-02-19 |
| 47 | Wedding venue booked | baseline start none → 2016-02-19; baseline finish none → 2016-02-19 |
| 48 | **Honeymoon** | baseline start none → 2016-06-15; baseline finish none → 2016-07-26 |
| 49 | Make honeymoon destination short list | baseline start none → 2016-06-15; baseline finish none → 2016-07-12 |
| 50 | Select honeymoon destination and book honeymoon | baseline start none → 2016-07-13; baseline finish none → 2016-07-26 |
| 52 | Rehearsal | baseline start none → 2016-08-16; baseline finish none → 2016-08-16 |
| 53 | Wedding day | baseline start none → 2016-08-25; baseline finish none → 2016-08-25 |

## Version 7 (saved 2016-01-29, file SSI Wedding 09.mpp)

Note of the change: codes added

Last finish stays 2016-08-25.

Added:

| ID | Task | Duration | Start | Finish | Predecessors | Resources |
| --- | --- | --- | --- | --- | --- | --- |
| 15 | Select and order best man tuxedo | 20d | 2016-05-04 | 2016-05-31 | 14 | Best Man's attire; Groom [10%] |

Changed:

| ID | Task | Finish | Duration | Total float | Other |
| --- | --- | --- | --- | --- | --- |
| 8 | **Attire** | 2016-05-23 → 2016-05-31 (+8d) | 97d → 103d | 46d → 40d | baseline finish 2016-05-23 → 2016-05-31 |

## Version 8 (saved 2016-02-02, file SSI Wedding 13.mpp)

Note of the change: codes added

Last finish stays 2016-08-25.

Changed:

| ID | Task | Other |
| --- | --- | --- |
| 25 | Book reception vnenue | was named Book reception venue |
| 30 | Book caterer and finalize menu | resources Bride [20%]; Groom [20%]; Catering [0.1%] → Bride [20%]; Groom [20%]; Cattering [0.1%] |

## Version 9 (data date 2016-01-31, saved 2016-02-04, file SSI Wedding 14.mpp)

Note of the change: codes added

Last finish stays 2016-08-25. Complete tasks 0 → 3.

Changed:

| ID | Task | Start | Finish | Duration | Complete | Total float | Other |
| --- | --- | --- | --- | --- | --- | --- | --- |
| 2 | Agree budget and approach | 2015-12-04 A | 2015-12-17 A |  | 0% → 100% | 0d → none |  |
| 7 | **PREPARATION PHASE** | 2015-12-18 A |  |  | 0% → 13% |  |  |
| 8 | **Attire** | 2016-01-08 A |  |  | 0% → 10% |  |  |
| 9 | **Select and order wedding dress** | 2016-01-08 A |  |  | 0% → 25% | 48d → 50d |  |
| 10 | Select wedding dress | 2016-01-08 A |  |  | 0% → 50% |  |  |
| 17 | **Guests** | 2015-12-18 A |  |  | 0% → 33% | 42d → 50d |  |
| 18 | Make Guest List | 2015-12-18 A | 2016-01-07 A |  | 0% → 100% | 42d → none |  |
| 23 | **Reception Venue** | 2016-01-08 A |  |  | 0% → 71% | 0d → 50d |  |
| 24 | Make reception venue short list | 2016-01-08 A | 2016-01-28 A |  | 0% → 100% | 0d → none |  |
| 25 | Book reception venue |  |  |  |  |  | was named Book reception vnenue |
| 28 | **Catering** | 2016-01-08 A |  |  | 0% → 11% |  |  |
| 29 | Make caterer short list | 2016-01-08 A | 2016-01-28 → 2016-02-10 (+13d) | 15d → 23.5d | 0% → 32% | 113d → 104.5d |  |
| 30 | Book caterer and finalize menu | 2016-01-29 → 2016-02-10 (+12d) | 2016-02-18 → 2016-03-02 (+13d) |  |  | 113d → 104.5d | constraint none → start no earlier than 2016-01-31; resources Bride [20%]; Groom [20%]; Cattering [0.1%] → Bride [20%]; Groom [20%]; Catering [0.1%] |
| 45 | **Wedding Venue** | 2016-01-29 A |  |  | 0% → 23% | 0d → 112d |  |
| 46 | Make wedding venue short list | 2016-01-29 A |  |  | 0% → 25% |  |  |
| 54 | Wedding day |  |  |  |  |  | constraint none → must start on 2016-08-25 |

## Version 10 (data date 2016-01-31, saved 2016-02-05, file SSI Wedding 15.mpp)

Note of the change: codes added

Last finish stays 2016-08-25.

Changed:

| ID | Task | Start | Finish | Duration | Total float |
| --- | --- | --- | --- | --- | --- |
| 4 | Set wedding date | 2016-02-22 → 2016-02-23 (+1d) | 2016-02-22 → 2016-02-23 (+1d) |  |  |
| 5 | Wedding date set | 2016-02-22 → 2016-02-23 (+1d) | 2016-02-22 → 2016-02-23 (+1d) |  |  |
| 9 | **Select and order wedding dress** |  | 2016-05-17 → 2016-05-18 (+1d) | 93d → 94d | 50d → 49d |
| 11 | Order dress | 2016-03-22 → 2016-03-23 (+1d) | 2016-03-22 → 2016-03-23 (+1d) |  | 50d → 49d |
| 12 | Measurements and fittings | 2016-03-23 → 2016-03-24 (+1d) | 2016-05-17 → 2016-05-18 (+1d) |  | 50d → 49d |
| 19 | Send out invitations | 2016-02-23 → 2016-02-24 (+1d) | 2016-03-21 → 2016-03-22 (+1d) |  |  |
| 28 | **Catering** |  | 2016-07-05 → 2016-07-26 (+21d) | 128d → 143d | 15d → 0d |
| 30 | Book caterer and finalize menu | 2016-02-10 → 2016-03-02 (+21d) | 2016-03-02 → 2016-03-22 (+20d) |  | 104.5d → 90d |
| 31 | Make baker short list | 2016-05-25 → 2016-05-18 (-7d) | 2016-06-14 → 2016-06-07 (-7d) |  | 15d → 0d |
| 32 | Select baker and order cake | 2016-06-15 → 2016-07-06 (+21d) | 2016-07-05 → 2016-07-26 (+21d) |  | 15d → 0d |
| 33 | **Flowers** | 2016-04-13 → 2016-06-15 (+63d) | 2016-05-24 → 2016-07-26 (+63d) |  | 45d → 0d |
| 34 | Make florist short list | 2016-04-13 → 2016-06-15 (+63d) | 2016-05-03 → 2016-07-05 (+63d) |  | 45d → 0d |
| 35 | Select florist and order flowers | 2016-05-04 → 2016-07-06 (+63d) | 2016-05-24 → 2016-07-26 (+63d) |  | 45d → 0d |
| 36 | **Memories** | 2016-03-23 → 2016-03-24 (+1d) | 2016-05-03 → 2016-05-04 (+1d) |  | 60d → 59d |
| 37 | Make photographer short list | 2016-03-23 → 2016-03-24 (+1d) | 2016-04-12 → 2016-04-13 (+1d) |  | 60d → 59d |
| 38 | Select and book photographer | 2016-04-13 → 2016-04-14 (+1d) | 2016-05-03 → 2016-05-04 (+1d) |  | 60d → 59d |
| 39 | **Details** | 2016-02-23 → 2016-02-24 (+1d) | 2016-06-14 → 2016-06-01 (-13d) | 81d → 71d | 30d → 39d |
| 40 | Select and buy rings | 2016-05-18 → 2016-05-05 (-13d) | 2016-06-14 → 2016-06-01 (-13d) |  | 30d → 39d |
| 41 | Select and book entertainment | 2016-02-23 → 2016-02-24 (+1d) | 2016-03-21 → 2016-03-22 (+1d) |  | 91d → 90d |
| 43 | Register wedding and get license | 2016-02-23 → 2016-02-24 (+1d) | 2016-02-29 → 2016-03-01 (+1d) |  | 106d → 105d |
| 44 | Wedding registered and licensed | 2016-02-29 → 2016-03-01 (+1d) | 2016-02-29 → 2016-03-01 (+1d) |  | 106d → 105d |
| 45 | **Wedding Venue** |  | 2016-02-19 → 2016-02-22 (+3d) | 16d → 17d | 112d → 111d |
| 47 | Book wedding venue | 2016-02-19 → 2016-02-22 (+3d) | 2016-02-19 → 2016-02-22 (+3d) |  |  |
| 48 | Wedding venue booked | 2016-02-19 → 2016-02-22 (+3d) | 2016-02-19 → 2016-02-22 (+3d) |  | 112d → 111d |

## Version 11 (data date 2016-04-30, saved 2016-02-05, file SSI Wedding 16.mpp)

Note of the change: codes added

Last finish stays 2016-08-25. Complete tasks 3 → 18.

Changed:

| ID | Task | Start | Finish | Duration | Complete | Total float | Predecessors | Other |
| --- | --- | --- | --- | --- | --- | --- | --- | --- |
| 4 | Set wedding date | 2016-02-23 A | 2016-02-23 A |  | 0% → 100% | 0d → none |  |  |
| 5 | Wedding date set | 2016-02-23 A | 2016-02-23 A |  | 0% → 100% | 40d → none |  |  |
| 7 | **PREPARATION PHASE** |  | 2016-07-26 → 2016-08-10 (+15d) | 158d → 169d | 13% → 48% | 0d → 5d |  |  |
| 8 | **Attire** |  | 2016-05-31 → 2016-06-28 (+28d) | 103d → 123d | 10% → 49% | 40d → 36d |  |  |
| 9 | **Select and order wedding dress** |  | 2016-05-18 → 2016-06-01 (+14d) | 94d → 104d | 25% → 75% | 49d → 39d |  |  |
| 10 | Select wedding dress |  | 2016-03-03 A |  | 50% → 100% | 48d → none |  |  |
| 11 | Order dress | 2016-03-23 A | 2016-03-23 A |  | 0% → 100% | 49d → none |  | resources Bride [50%]; Bridesmaids' attire [0.1%] → Bride [50%]; Bride's attire [0.1%]; baseline start 2016-03-22 → 2016-03-23; baseline finish 2016-03-22 → 2016-03-23 |
| 12 | Measurements and fittings | 2016-03-24 A | 2016-05-18 → 2016-06-01 (+14d) | 40d → 50d | 0% → 54% | 49d → 39d |  |  |
| 13 | Select and order bridesmaid dresses | 2016-03-01 A | 2016-05-23 → 2016-06-06 (+14d) | 60d → 70d | 0% → 43% | 46d → 52d |  |  |
| 14 | Select and order groom tuxedo | 2016-03-23 A | 2016-05-03 → 2016-05-17 (+14d) | 30d → 40d | 0% → 38% | 40d → 36d |  |  |
| 15 | Select and order best man tuxedo | 2016-05-04 → 2016-05-18 (+14d) | 2016-05-31 → 2016-06-28 (+28d) | 20d → 30d |  | 40d → 36d |  |  |
| 16 | All attire ordered | 2016-05-23 → 2016-06-06 (+14d) | 2016-05-23 → 2016-06-06 (+14d) |  |  | 46d → 52d |  |  |
| 17 | **Guests** |  | 2016-05-17 → 2016-05-18 (+1d) | 108d → 109d | 33% → 78% | 50d → 65d |  |  |
| 19 | Send out invitations | 2016-02-24 A | 2016-03-22 A |  | 0% → 100% | 0d → none |  |  |
| 20 | Finalize Guest List | 2016-05-04 → 2016-05-05 (+1d) | 2016-05-10 → 2016-05-11 (+1d) |  |  | 50d → 49d |  |  |
| 21 | Guest List finalized | 2016-05-10 → 2016-05-11 (+1d) | 2016-05-10 → 2016-05-11 (+1d) |  |  | 55d → 70d |  |  |
| 22 | Book guest accommodation | 2016-05-11 → 2016-05-12 (+1d) | 2016-05-17 → 2016-05-18 (+1d) |  |  | 50d → 65d |  |  |
| 23 | **Reception Venue** |  | 2016-05-17 → 2016-05-18 (+1d) | 93d → 94d | 71% → 76% | 50d → 49d |  |  |
| 25 | Book reception venue | 2016-02-19 A | 2016-02-19 A |  | 0% → 100% | 1d → none |  |  |
| 26 | Reception venue booked | 2016-02-19 A | 2016-02-19 A |  | 0% → 100% | 112d → none |  |  |
| 27 | Plan and finalize seating arrangements | 2016-05-11 → 2016-05-12 (+1d) | 2016-05-17 → 2016-05-18 (+1d) |  |  | 50d → 49d |  |  |
| 28 | **Catering** |  | 2016-07-26 → 2016-06-29 (-27d) | 143d → 124d | 11% → 56% | 0d → 35d |  |  |
| 29 | Make caterer short list |  | 2016-02-10 A |  | 32% → 100% | 90d → none |  |  |
| 30 | Book caterer and finalize menu | 2016-03-02 A | 2016-03-22 A |  | 0% → 100% | 90d → none |  |  |
| 31 | Make baker short list | 2016-05-18 → 2016-05-19 (+1d) | 2016-06-07 → 2016-06-08 (+1d) |  |  | 0d → 35d |  |  |
| 32 | Select baker and order cake | 2016-07-06 → 2016-06-09 (-27d) | 2016-07-26 → 2016-06-29 (-27d) |  |  | 0d → 35d |  |  |
| 33 | **Flowers** | 2016-06-15 → 2016-06-09 (-6d) | 2016-07-26 → 2016-07-20 (-6d) |  |  | 0d → 20d |  |  |
| 34 | Make florist short list | 2016-06-15 → 2016-06-09 (-6d) | 2016-07-05 → 2016-06-29 (-6d) |  |  | 0d → 20d |  |  |
| 35 | Select florist and order flowers | 2016-07-06 → 2016-06-30 (-6d) | 2016-07-26 → 2016-07-20 (-6d) |  |  | 0d → 20d |  |  |
| 36 | **Memories** | 2016-03-24 A |  |  | 0% → 25% | 59d → 75d |  |  |
| 37 | Make photographer short list | 2016-03-24 A |  |  | 0% → 50% | 59d → 75d |  |  |
| 39 | **Details** | 2016-02-24 A | 2016-06-01 → 2016-06-14 (+13d) | 71d → 80d | 0% → 45% | 39d → 46d |  |  |
| 40 | Select and buy rings | 2016-05-05 → 2016-05-18 (+13d) | 2016-06-01 → 2016-06-14 (+13d) |  |  | 39d → 46d |  |  |
| 41 | Select and book entertainment | 2016-02-24 A | 2016-03-22 A |  | 0% → 100% | 90d → none |  |  |
| 42 | Select and book transport | 2016-05-18 → 2016-05-19 (+1d) | 2016-05-31 → 2016-06-01 (+1d) |  |  | 40d → 55d |  |  |
| 43 | Register wedding and get license | 2016-02-24 A | 2016-03-01 A |  | 0% → 100% | 105d → none |  |  |
| 44 | Wedding registered and licensed | 2016-03-01 A | 2016-03-01 A |  | 0% → 100% | 105d → none |  |  |
| 45 | **Wedding Venue** |  | 2016-02-22 A |  | 23% → 100% | 111d → none |  |  |
| 46 | Make wedding venue short list |  | 2016-02-18 A |  | 25% → 100% | 0d → none |  |  |
| 47 | Book wedding venue | 2016-02-22 A | 2016-02-22 A |  | 0% → 100% | 0d → none |  |  |
| 48 | Wedding venue booked | 2016-02-22 A | 2016-02-22 A |  | 0% → 100% | 111d → none |  |  |
| 49 | **Honeymoon** | 2016-06-15 → 2016-06-30 (+15d) | 2016-07-26 → 2016-08-10 (+15d) |  |  | 0d → 5d |  |  |
| 50 | Make honeymoon destination short list | 2016-06-15 → 2016-06-30 (+15d) | 2016-07-12 → 2016-07-27 (+15d) |  |  | 0d → 5d |  |  |
| 51 | Select honeymoon destination and book honeymoon | 2016-07-13 → 2016-07-28 (+15d) | 2016-07-26 → 2016-08-10 (+15d) |  |  | 0d → 5d |  |  |
| 54 | Wedding day |  |  |  |  |  | 7FS+21d → 7FS+5d |  |

## Version 12 (data date 2016-04-30, saved 2016-02-17, file SSI My Wedding Planner.mpt)

Note of the change: codes added

Last finish stays 2016-08-25. Complete tasks 18 → 0.

Changed:

| ID | Task | Start | Finish | Complete | Total float | Other |
| --- | --- | --- | --- | --- | --- | --- |
| 2 | Agree budget and approach | 2015-12-04 A → 2015-12-04 | 2015-12-17 A → 2015-12-17 | 100% → 0% | none → 0d | baseline start 2015-12-04 → none; baseline finish 2015-12-17 → none |
| 4 | Set wedding date | 2016-02-23 A → 2016-02-23 | 2016-02-23 A → 2016-02-23 | 100% → 0% | none → 0d | baseline start 2016-02-22 → none; baseline finish 2016-02-22 → none |
| 5 | Wedding date set | 2016-02-23 A → 2016-02-23 | 2016-02-23 A → 2016-02-23 | 100% → 0% | none → 0d | baseline start 2016-02-22 → none; baseline finish 2016-02-22 → none |
| 7 | **PREPARATION PHASE** | 2015-12-18 A → 2015-12-18 |  | 48% → 0% | 5d → 0d | baseline start 2015-12-18 → none; baseline finish 2016-07-26 → none |
| 8 | **Attire** | 2016-01-08 A → 2016-01-08 |  | 49% → 0% | 36d → 0d | baseline start 2016-01-08 → none; baseline finish 2016-05-31 → none |
| 9 | **Select and order wedding dress** | 2016-01-08 A → 2016-01-08 |  | 75% → 0% | 39d → 0d | baseline start 2016-01-08 → none; baseline finish 2016-05-17 → none |
| 10 | Select wedding dress | 2016-01-08 A → 2016-01-08 | 2016-03-03 A → 2016-03-03 | 100% → 0% | none → 0d | baseline start 2016-01-08 → none; baseline finish 2016-03-03 → none |
| 11 | Order dress | 2016-03-23 A → 2016-03-23 | 2016-03-23 A → 2016-03-23 | 100% → 0% | none → 0d | baseline start 2016-03-23 → none; baseline finish 2016-03-23 → none |
| 12 | Measurements and fittings | 2016-03-24 A → 2016-03-24 |  | 54% → 0% | 39d → 0d | baseline start 2016-03-23 → none; baseline finish 2016-05-17 → none |
| 13 | Select and order bridesmaid dresses | 2016-03-01 A → 2016-03-01 |  | 43% → 0% | 52d → 0d | baseline start 2016-03-01 → none; baseline finish 2016-05-23 → none |
| 14 | Select and order groom tuxedo | 2016-03-23 A → 2016-03-23 |  | 38% → 0% | 36d → 0d | baseline start 2016-03-23 → none; baseline finish 2016-05-03 → none |
| 15 | Select and order best man tuxedo |  |  |  |  | baseline start 2016-05-04 → none; baseline finish 2016-05-31 → none |
| 16 | All attire ordered |  |  |  |  | baseline start 2016-05-23 → none; baseline finish 2016-05-23 → none |
| 17 | **Guests** | 2015-12-18 A → 2015-12-18 |  | 78% → 0% | 65d → 0d | baseline start 2015-12-18 → none; baseline finish 2016-05-17 → none |
| 18 | Make Guest List | 2015-12-18 A → 2015-12-18 | 2016-01-07 A → 2016-01-07 | 100% → 0% | none → 0d | baseline start 2015-12-18 → none; baseline finish 2016-01-07 → none |
| 19 | Send out invitations | 2016-02-24 A → 2016-02-24 | 2016-03-22 A → 2016-03-22 | 100% → 0% | none → 0d | baseline start 2016-02-23 → none; baseline finish 2016-03-21 → none |
| 20 | Finalize Guest List |  |  |  |  | baseline start 2016-05-04 → none; baseline finish 2016-05-10 → none |
| 21 | Guest List finalized |  |  |  |  | baseline start 2016-05-10 → none; baseline finish 2016-05-10 → none |
| 22 | Book guest accommodation |  |  |  |  | baseline start 2016-05-11 → none; baseline finish 2016-05-17 → none |
| 23 | **Reception Venue** | 2016-01-08 A → 2016-01-08 |  | 76% → 0% | 49d → 0d | baseline start 2016-01-08 → none; baseline finish 2016-05-17 → none |
| 24 | Make reception venue short list | 2016-01-08 A → 2016-01-08 | 2016-01-28 A → 2016-01-28 | 100% → 0% | none → 0d | baseline start 2016-01-08 → none; baseline finish 2016-01-28 → none |
| 25 | Book reception venue | 2016-02-19 A → 2016-02-19 | 2016-02-19 A → 2016-02-19 | 100% → 0% | none → 0d | baseline start 2016-02-19 → none; baseline finish 2016-02-19 → none |
| 26 | Reception venue booked | 2016-02-19 A → 2016-02-19 | 2016-02-19 A → 2016-02-19 | 100% → 0% | none → 0d | baseline start 2016-02-19 → none; baseline finish 2016-02-19 → none |
| 27 | Plan and finalize seating arrangements |  |  |  |  | baseline start 2016-05-11 → none; baseline finish 2016-05-17 → none |
| 28 | **Catering** | 2016-01-08 A → 2016-01-08 |  | 56% → 0% | 35d → 0d | baseline start 2016-01-08 → none; baseline finish 2016-07-05 → none |
| 29 | Make caterer short list | 2016-01-08 A → 2016-01-08 | 2016-02-10 A → 2016-02-10 | 100% → 0% | none → 0d | baseline start 2016-01-08 → none; baseline finish 2016-01-28 → none |
| 30 | Book caterer and finalize menu | 2016-03-02 A → 2016-03-02 | 2016-03-22 A → 2016-03-22 | 100% → 0% | none → 0d | baseline start 2016-01-29 → none; baseline finish 2016-02-18 → none |
| 31 | Make baker short list |  |  |  |  | baseline start 2016-05-25 → none; baseline finish 2016-06-14 → none |
| 32 | Select baker and order cake |  |  |  |  | baseline start 2016-06-15 → none; baseline finish 2016-07-05 → none |
| 33 | **Flowers** |  |  |  |  | baseline start 2016-04-13 → none; baseline finish 2016-05-24 → none |
| 34 | Make florist short list |  |  |  |  | baseline start 2016-04-13 → none; baseline finish 2016-05-03 → none |
| 35 | Select florist and order flowers |  |  |  |  | baseline start 2016-05-04 → none; baseline finish 2016-05-24 → none |
| 36 | **Memories** | 2016-03-24 A → 2016-03-24 |  | 25% → 0% | 75d → 0d | baseline start 2016-03-23 → none; baseline finish 2016-05-03 → none |
| 37 | Make photographer short list | 2016-03-24 A → 2016-03-24 |  | 50% → 0% | 75d → 0d | baseline start 2016-03-23 → none; baseline finish 2016-04-12 → none |
| 38 | Select and book photographer |  |  |  |  | baseline start 2016-04-13 → none; baseline finish 2016-05-03 → none |
| 39 | **Details** | 2016-02-24 A → 2016-02-24 |  | 45% → 0% | 46d → 0d | baseline start 2016-02-23 → none; baseline finish 2016-06-14 → none |
| 40 | Select and buy rings |  |  |  |  | baseline start 2016-05-18 → none; baseline finish 2016-06-14 → none |
| 41 | Select and book entertainment | 2016-02-24 A → 2016-02-24 | 2016-03-22 A → 2016-03-22 | 100% → 0% | none → 0d | baseline start 2016-02-23 → none; baseline finish 2016-03-21 → none |
| 42 | Select and book transport |  |  |  |  | baseline start 2016-05-18 → none; baseline finish 2016-05-31 → none |
| 43 | Register wedding and get license | 2016-02-24 A → 2016-02-24 | 2016-03-01 A → 2016-03-01 | 100% → 0% | none → 0d | baseline start 2016-02-23 → none; baseline finish 2016-02-29 → none |
| 44 | Wedding registered and licensed | 2016-03-01 A → 2016-03-01 | 2016-03-01 A → 2016-03-01 | 100% → 0% | none → 0d | baseline start 2016-02-29 → none; baseline finish 2016-02-29 → none |
| 45 | **Wedding Venue** | 2016-01-29 A → 2016-01-29 | 2016-02-22 A → 2016-02-22 | 100% → 0% | none → 0d | baseline start 2016-01-29 → none; baseline finish 2016-02-19 → none |
| 46 | Make wedding venue short list | 2016-01-29 A → 2016-01-29 | 2016-02-18 A → 2016-02-18 | 100% → 0% | none → 0d | baseline start 2016-01-29 → none; baseline finish 2016-02-18 → none |
| 47 | Book wedding venue | 2016-02-22 A → 2016-02-22 | 2016-02-22 A → 2016-02-22 | 100% → 0% | none → 0d | baseline start 2016-02-19 → none; baseline finish 2016-02-19 → none |
| 48 | Wedding venue booked | 2016-02-22 A → 2016-02-22 | 2016-02-22 A → 2016-02-22 | 100% → 0% | none → 0d | baseline start 2016-02-19 → none; baseline finish 2016-02-19 → none |
| 49 | **Honeymoon** |  |  |  |  | baseline start 2016-06-15 → none; baseline finish 2016-07-26 → none |
| 50 | Make honeymoon destination short list |  |  |  |  | baseline start 2016-06-15 → none; baseline finish 2016-07-12 → none |
| 51 | Select honeymoon destination and book honeymoon |  |  |  |  | baseline start 2016-07-13 → none; baseline finish 2016-07-26 → none |
| 53 | Rehearsal |  |  |  |  | baseline start 2016-08-16 → none; baseline finish 2016-08-16 → none |
| 54 | Wedding day |  |  |  |  | baseline start 2016-08-25 → none; baseline finish 2016-08-25 → none |
