# SimonSezIT-Project2016-Bathroom-Refit-Team-Planner

How a schedule from MS Project changed from version to version. A marks actual dates.

## Version 1 (data date 2016-02-03, saved 2016-02-22, file SimonSezIT-Project2016-Bathroom-Refit-Team-Planner.mpp)

Note of the change: codes added

| ID | WBS | Task | Duration | Start | Finish | Predecessors | Complete | Total float | Constraint |
| --- | --- | --- | --- | --- | --- | --- | --- | --- | --- |
| 2 | 1 | **PLANNING PHASE** | 16.5d | 2016-01-20 A | 2016-02-11 |  | 63% | 0.5d |  |
| 3 | 1.1 | **Planning** | 4d | 2016-01-20 A | 2016-01-25 A |  | 100% |  |  |
| 4 |  | Scoping | 2d | 2016-01-20 A | 2016-01-21 A |  | 100% |  |  |
| 5 |  | Select style | 2d | 2016-01-22 A | 2016-01-25 A | 4 | 100% |  |  |
| 6 |  | Decide about project manager | 2d | 2016-01-22 A | 2016-01-25 A | 4 | 100% |  |  |
| 7 |  | Check permissions required | 2d | 2016-01-22 A | 2016-01-25 A | 4 | 100% |  |  |
| 8 |  | Fix dates | 2d | 2016-01-22 A | 2016-01-25 A | 4 | 100% |  |  |
| 9 |  | Arrange temporary accommodation | 2d | 2016-01-22 A | 2016-01-25 A | 4 | 100% |  |  |
| 10 | 1.2 | **Contractors** | 14.5d | 2016-01-20 A | 2016-02-09 |  | 45% | 2.5d |  |
| 11 |  | Get contractor recommendations | 2d | 2016-01-20 A | 2016-01-21 A |  | 100% |  |  |
| 12 |  | Make contractor short list | 2d | 2016-01-22 A | 2016-01-25 A | 11 | 100% |  |  |
| 13 |  | Get contractor quotations | 9.5d | 2016-01-26 A | 2016-02-08 | 12, 3 | 26% | 0.5d |  |
| 14 |  | Appoint contractors | 1d | 2016-02-08 | 2016-02-09 | 13 |  | 2.5d | start no earlier than 2016-02-03 |
| 15 |  | Contractors appointed | 0d | 2016-02-09 | 2016-02-09 | 14 |  | 2.5d | start no earlier than 2016-02-03 |
| 16 | 1.3 | **Finance** | 3d | 2016-02-08 | 2016-02-11 |  |  | 0.5d |  |
| 17 |  | Estimate finance needed | 1d | 2016-02-08 | 2016-02-09 | 13 |  | 0.5d | start no earlier than 2016-02-03 |
| 18 |  | Arrange finance | 2d | 2016-02-09 | 2016-02-11 | 17 |  | 0.5d | start no earlier than 2016-02-03 |
| 19 |  | Finance arranged | 0d | 2016-02-11 | 2016-02-11 | 18 |  | 0.5d |  |
| 21 | 2 | **PURCHASING PHASE** | 7d | 2016-02-11 | 2016-02-22 | 2 |  | 0.5d |  |
| 22 | 2.1 | **Tiling** | 5d | 2016-02-11 | 2016-02-18 |  |  | 2.5d |  |
| 23 |  | Review available tiles | 3d | 2016-02-11 | 2016-02-16 |  |  | 2.5d |  |
| 24 |  | Select and order tiles | 2d | 2016-02-16 | 2016-02-18 | 23 |  | 2.5d |  |
| 25 |  | Tiling delivery | 0d | 2016-02-18 | 2016-02-18 | 24 |  | 2.5d |  |
| 26 | 2.2 | **Flooring** | 5d | 2016-02-11 | 2016-02-18 |  |  | 2.5d |  |
| 27 |  | Review available flooring | 3d | 2016-02-11 | 2016-02-16 |  |  | 2.5d |  |
| 28 |  | Select and order flooring | 2d | 2016-02-16 | 2016-02-18 | 27 |  | 2.5d |  |
| 29 |  | Flooring delivery | 0d | 2016-02-18 | 2016-02-18 | 28 |  | 2.5d |  |
| 30 | 2.3 | **Painting** | 4d | 2016-02-11 | 2016-02-17 |  |  | 3.5d |  |
| 31 |  | Review paint options | 2d | 2016-02-11 | 2016-02-15 |  |  | 3.5d |  |
| 32 |  | Select and order paint | 2d | 2016-02-15 | 2016-02-17 | 31 |  | 3.5d |  |
| 33 |  | Paint delivery | 0d | 2016-02-17 | 2016-02-17 | 32 |  | 3.5d |  |
| 34 | 2.4 | **Equipment** | 7d | 2016-02-11 | 2016-02-22 |  |  | 0.5d |  |
| 35 |  | Visit bathroom showrooms | 2d | 2016-02-11 | 2016-02-15 |  |  | 0.5d |  |
| 36 |  | Select and order equipment | 4d | 2016-02-15 | 2016-02-19 | 35 |  | 0.5d |  |
| 37 |  | Equipment delivery | 1d | 2016-02-19 | 2016-02-22 | 36 |  | 0.5d |  |
| 38 |  | All materials on site | 0d | 2016-02-22 | 2016-02-22 | 25, 29, 33, 37 |  | 0.5d |  |
| 40 | 3 | **IMPLEMENTATION PHASE** | 11d | 2016-02-22 | 2016-03-08 | 21 |  | 0.5d |  |
| 41 | 3.1 | **Preparation** | 5d | 2016-02-22 | 2016-02-29 |  |  | 0.5d |  |
| 42 |  | Setup skip for waste | 1d | 2016-02-22 | 2016-02-23 |  |  | 0.5d |  |
| 43 |  | Gut existing bathroom | 2d | 2016-02-23 | 2016-02-25 | 42 |  | 0.5d |  |
| 44 |  | Prepare for tiling | 2d | 2016-02-25 | 2016-02-29 | 43 |  | 1.5d |  |
| 45 |  | Prepare for flooring | 2d | 2016-02-25 | 2016-02-29 | 43 |  | 1.5d |  |
| 46 |  | Prepare for painting | 2d | 2016-02-25 | 2016-02-29 | 43 |  | 0.5d |  |
| 47 | 3.2 | **Electrical** | 7d | 2016-02-25 | 2016-03-07 |  |  | 0d |  |
| 48 |  | First fix electrics | 2d | 2016-02-25 | 2016-02-29 | 43 |  | 2.5d |  |
| 49 |  | Second fix electrics | 2d | 2016-03-02 | 2016-03-04 | 60, 48 |  | 0.5d |  |
| 50 |  | Sauna electrics | 1d | 2016-02-25 | 2016-02-26 |  |  |  |  |
| 51 |  | Certification | 1d | 2016-03-04 | 2016-03-07 | 49 |  | 1.5d |  |
| 52 | 3.3 | **Plumbing** | 6d | 2016-02-25 | 2016-03-04 |  |  | 0.5d |  |
| 53 |  | First fix plumbing | 2d | 2016-02-25 | 2016-02-29 | 43 |  | 2.5d |  |
| 54 |  | Second fix plumbing | 2d | 2016-03-02 | 2016-03-04 | 53, 60 |  | 0.5d |  |
| 55 | 3.4 | **Tiling** | 2d | 2016-02-29 | 2016-03-02 |  |  | 1.5d |  |
| 56 |  | Fit tiles | 2d | 2016-02-29 | 2016-03-02 | 44 |  | 1.5d |  |
| 57 | 3.5 | **Flooring** | 2d | 2016-02-29 | 2016-03-02 |  |  | 1.5d |  |
| 58 |  | Fit flooring | 2d | 2016-02-29 | 2016-03-02 | 45 |  | 1.5d |  |
| 59 | 3.6 | **Painting** | 2d | 2016-02-29 | 2016-03-02 |  |  | 0.5d |  |
| 60 |  | Paint | 2d | 2016-02-29 | 2016-03-02 | 46 |  | 0.5d |  |
| 61 | 3.7 | **Equipment** | 3d | 2016-03-03 | 2016-03-08 |  |  | 0.5d |  |
| 62 |  | Fit equipment | 3d | 2016-03-03 | 2016-03-08 | 60, 49SS+1d, 54SS+1d, 56, 58 |  | 0.5d |  |
| 63 |  | Equipment fitted | 0d | 2016-03-08 | 2016-03-08 | 62 |  | 0.5d |  |
| 65 | 4 | **COMPLETION PHASE** | 3.5d | 2016-03-08 | 2016-03-11 | 40 |  | 0d |  |
| 66 |  | Resolve snags | 2d | 2016-03-08 | 2016-03-10 |  |  | 0.5d |  |
| 67 |  | Clean up | 1d | 2016-03-10 | 2016-03-11 | 66 |  | 0.5d |  |
| 68 |  | Refit complete | 0d | 2016-03-11 | 2016-03-11 | 67 |  | 0d | must finish on 2016-03-11 |

## Version 2 (data date 2016-03-04, saved 2016-02-15, file SimonSezIT-Project2016-Bathroom-Refit-EVA.mpp)

Note of the change: codes added

Last finish 2016-03-11 → 2016-03-17 (+6d). Complete tasks 8 → 33.

Removed: 50 Sauna electrics

Changed:

| ID | Task | Start | Finish | Duration | Complete | Total float | Other |
| --- | --- | --- | --- | --- | --- | --- | --- |
| 2 | **PLANNING PHASE** |  | 2016-02-11 A |  | 63% → 100% | 0.5d → none |  |
| 10 | **Contractors** |  | 2016-02-09 A |  | 45% → 100% | 2.5d → none |  |
| 13 | Get contractor quotations |  | 2016-02-08 A |  | 26% → 100% | 0.5d → none |  |
| 14 | Appoint contractors | 2016-02-08 A | 2016-02-09 A |  | 0% → 100% | 2.5d → none |  |
| 15 | Contractors appointed | 2016-02-09 A | 2016-02-09 A |  | 0% → 100% | 2.5d → none |  |
| 16 | **Finance** | 2016-02-08 A | 2016-02-11 A |  | 0% → 100% | 0.5d → none |  |
| 17 | Estimate finance needed | 2016-02-08 A | 2016-02-09 A |  | 0% → 100% | 0.5d → none |  |
| 18 | Arrange finance | 2016-02-09 A | 2016-02-11 A |  | 0% → 100% | 0.5d → none |  |
| 19 | Finance arranged | 2016-02-11 A | 2016-02-11 A |  | 0% → 100% | 0.5d → none |  |
| 21 | **PURCHASING PHASE** | 2016-02-11 A | 2016-02-22 A |  | 0% → 100% | 0.5d → none |  |
| 22 | **Tiling** | 2016-02-11 A | 2016-02-18 A |  | 0% → 100% | 2.5d → none |  |
| 23 | Review available tiles | 2016-02-11 A | 2016-02-16 A |  | 0% → 100% | 2.5d → none |  |
| 24 | Select and order tiles | 2016-02-16 A | 2016-02-18 A |  | 0% → 100% | 2.5d → none |  |
| 25 | Tiling delivery | 2016-02-18 A | 2016-02-18 A |  | 0% → 100% | 2.5d → none |  |
| 26 | **Flooring** | 2016-02-11 A | 2016-02-18 A |  | 0% → 100% | 2.5d → none |  |
| 27 | Review available flooring | 2016-02-11 A | 2016-02-16 A |  | 0% → 100% | 2.5d → none |  |
| 28 | Select and order flooring | 2016-02-16 A | 2016-02-18 A |  | 0% → 100% | 2.5d → none |  |
| 29 | Flooring delivery | 2016-02-18 A | 2016-02-18 A |  | 0% → 100% | 2.5d → none |  |
| 30 | **Painting** | 2016-02-11 A | 2016-02-17 A |  | 0% → 100% | 3.5d → none |  |
| 31 | Review paint options | 2016-02-11 A | 2016-02-15 A |  | 0% → 100% | 3.5d → none |  |
| 32 | Select and order paint | 2016-02-15 A | 2016-02-17 A |  | 0% → 100% | 3.5d → none | resources Paint [8 litre] → Paint [12 litre] |
| 33 | Paint delivery | 2016-02-17 A | 2016-02-17 A |  | 0% → 100% | 3.5d → none |  |
| 34 | **Equipment** | 2016-02-11 A | 2016-02-22 A |  | 0% → 100% | 0.5d → none |  |
| 35 | Visit bathroom showrooms | 2016-02-11 A | 2016-02-15 A |  | 0% → 100% | 0.5d → none |  |
| 36 | Select and order equipment | 2016-02-15 A | 2016-02-19 A |  | 0% → 100% | 0.5d → none |  |
| 37 | Equipment delivery | 2016-02-19 A | 2016-02-22 A |  | 0% → 100% | 0.5d → none |  |
| 38 | All materials on site | 2016-02-22 A | 2016-02-22 A |  | 0% → 100% | 0.5d → none |  |
| 40 | **IMPLEMENTATION PHASE** | 2016-02-22 A | 2016-03-08 → 2016-03-14 (+6d) | 11d → 15.5d | 0% → 51% | 0.5d → 0d |  |
| 41 | **Preparation** | 2016-02-22 A | 2016-02-29 → 2016-03-02 A (+2d) | 5d → 7d | 0% → 100% | 0.5d → none |  |
| 42 | Setup skip for waste | 2016-02-22 A | 2016-02-23 A |  | 0% → 100% | 0.5d → none |  |
| 43 | Gut existing bathroom | 2016-02-23 A | 2016-02-25 → 2016-02-26 A (+1d) | 2d → 3d | 0% → 100% | 0.5d → none |  |
| 44 | Prepare for tiling | 2016-02-25 → 2016-02-26 A (+1d) | 2016-02-29 → 2016-03-02 A (+2d) | 2d → 3d | 0% → 100% | 1.5d → none |  |
| 45 | Prepare for flooring | 2016-02-25 → 2016-02-26 A (+1d) | 2016-02-29 → 2016-03-02 A (+2d) | 2d → 3d | 0% → 100% | 1.5d → none |  |
| 46 | Prepare for painting | 2016-02-25 → 2016-02-26 A (+1d) | 2016-02-29 → 2016-03-02 A (+2d) | 2d → 3d | 0% → 100% | 0.5d → none |  |
| 47 | **Electrical** | 2016-02-25 → 2016-02-26 A (+1d) | 2016-03-07 → 2016-03-14 (+7d) | 7d → 11.5d | 0% → 43% |  |  |
| 48 | First fix electrics | 2016-02-25 → 2016-02-26 A (+1d) | 2016-02-29 → 2016-03-02 A (+2d) | 2d → 3d | 0% → 100% | 2.5d → none |  |
| 49 | Second fix electrics | 2016-03-02 → 2016-03-09 (+7d) | 2016-03-04 → 2016-03-11 (+7d) | 2d → 3d |  | 0.5d → 0d | constraint none → start no earlier than 2016-03-04 |
| 50 | Certification | 2016-03-04 → 2016-03-14 (+10d) | 2016-03-07 → 2016-03-14 (+7d) |  |  | 1.5d → 0d |  |
| 51 | **Plumbing** | 2016-02-25 → 2016-02-26 A (+1d) | 2016-03-04 → 2016-03-10 (+6d) | 6d → 9.5d | 0% → 33% | 0.5d → 0d |  |
| 52 | First fix plumbing | 2016-02-25 → 2016-02-26 A (+1d) | 2016-02-29 → 2016-03-08 (+8d) | 2d → 4d | 0% → 50% | 2.5d → 0d |  |
| 53 | Second fix plumbing | 2016-03-02 → 2016-03-09 (+7d) | 2016-03-04 → 2016-03-10 (+6d) |  |  | 0.5d → 0d | constraint none → start no earlier than 2016-03-04 |
| 54 | **Tiling** | 2016-02-29 → 2016-03-07 (+7d) | 2016-03-02 → 2016-03-08 (+6d) |  |  | 1.5d → 1d |  |
| 55 | Fit tiles | 2016-02-29 → 2016-03-07 (+7d) | 2016-03-02 → 2016-03-08 (+6d) |  |  | 1.5d → 1d | constraint none → start no earlier than 2016-03-04 |
| 56 | **Flooring** | 2016-02-29 → 2016-03-07 (+7d) | 2016-03-02 → 2016-03-08 (+6d) |  |  | 1.5d → 1d |  |
| 57 | Fit flooring | 2016-02-29 → 2016-03-07 (+7d) | 2016-03-02 → 2016-03-08 (+6d) |  |  | 1.5d → 1d | constraint none → start no earlier than 2016-03-04 |
| 58 | **Painting** | 2016-02-29 → 2016-03-07 (+7d) | 2016-03-02 → 2016-03-08 (+6d) |  |  | 0.5d → 0d |  |
| 59 | Paint | 2016-02-29 → 2016-03-07 (+7d) | 2016-03-02 → 2016-03-08 (+6d) |  |  | 0.5d → 0d | constraint none → start no earlier than 2016-03-04 |
| 60 | **Equipment** | 2016-03-03 → 2016-03-10 (+7d) | 2016-03-08 → 2016-03-14 (+6d) |  |  | 0.5d → 0d |  |
| 61 | Fit equipment | 2016-03-03 → 2016-03-10 (+7d) | 2016-03-08 → 2016-03-14 (+6d) |  |  | 0.5d → 0d |  |
| 62 | Equipment fitted | 2016-03-08 → 2016-03-14 (+6d) | 2016-03-08 → 2016-03-14 (+6d) |  |  | 0.5d → 0d |  |
| 64 | **COMPLETION PHASE** | 2016-03-08 → 2016-03-15 (+7d) | 2016-03-11 → 2016-03-17 (+6d) | 3.5d → 3d |  |  |  |
| 65 | Resolve snags | 2016-03-08 → 2016-03-15 (+7d) | 2016-03-10 → 2016-03-16 (+6d) |  |  | 0.5d → 0d |  |
| 66 | Clean up | 2016-03-10 → 2016-03-17 (+7d) | 2016-03-11 → 2016-03-17 (+6d) |  |  | 0.5d → 0d |  |
| 67 | Refit complete | 2016-03-11 → 2016-03-17 (+6d) | 2016-03-11 → 2016-03-17 (+6d) |  |  |  | constraint must finish on 2016-03-11 → none |
